# Project Plan_Flydubai

Schedule from MS Project, 2012-04-01 to 2012-11-07.

## Calendars

- Calendar_UAE: Mon-Thu 08:00-16:00; Fri-Sat off; Sun 08:00-16:00. Exceptions (off unless hours are given): 2012-04-09 to 2012-04-12 (Holiday).

## Resources

| Resource |
| --- |
| Ashish Singh |
| Mithun Desai |
| Dixit Sukhadiya |

## Schedule

| ID | WBS | Task | Duration | Start | Finish | Predecessors | Baseline start | Baseline finish | Baseline duration | Total slack | Constraint | Resources | Work |
| --- | --- | --- | --- | --- | --- | --- | --- | --- | --- | --- | --- | --- | --- |
| 1 | 1 | **Flydubai - BI Implemetation** | 154.5d | 2012-04-01 08:00 | 2012-11-07 12:00 |  | 2012-04-01 08:00 | 2012-11-07 12:00 | 154.5d | 0d |  |  | 2984.4h |
| 2 | 1.1 | **Phase 1 - Initial design** | 43d | 2012-04-01 08:00 | 2012-06-04 16:00 |  | 2012-04-01 08:00 | 2012-06-04 16:00 | 43d | 0d |  |  | 152h |
| 3 | 1.1.1 | **APPLICATION ARCHITECTURE DESIGN** | 5d | 2012-04-01 08:00 | 2012-04-05 16:00 |  | 2012-04-01 08:00 | 2012-04-05 16:00 | 5d | 0d |  |  | 32h |
| 4 | 1.1.1.1 | Gather & document technical requirements | 1d | 2012-04-01 08:00 | 2012-04-01 16:00 |  | 2012-04-01 08:00 | 2012-04-01 16:00 | 1d | 0d | start no earlier than 2012-04-01 08:00 |  |  |
| 5 | 1.1.1.2 | Review current technical environment | 1d | 2012-04-02 08:00 | 2012-04-02 16:00 | 4 | 2012-04-02 08:00 | 2012-04-02 16:00 | 1d | 0d |  | Ashish Singh | 8h |
| 6 | 1.1.1.3 | Create architecture model | 2d | 2012-04-03 08:00 | 2012-04-04 16:00 | 5 | 2012-04-03 08:00 | 2012-04-04 16:00 | 2d | 0d |  | Ashish Singh | 16h |
| 7 | 1.1.1.4 | Develop configuration recommendations | 1d | 2012-04-05 08:00 | 2012-04-05 16:00 | 6 | 2012-04-05 08:00 | 2012-04-05 16:00 | 1d | 0d |  | Ashish Singh | 8h |
| 8 | 1.1.2 | **CREATE INFRASTRUCTURE PLAN** | 4d | 2012-04-08 08:00 | 2012-04-17 16:00 |  | 2012-04-08 08:00 | 2012-04-17 16:00 | 4d | 0d |  |  | 32h |
| 9 | 1.1.2.1 | Create draft infrastructure model and plan | 1d | 2012-04-08 08:00 | 2012-04-08 16:00 | 7 | 2012-04-08 08:00 | 2012-04-08 16:00 | 1d | 0d |  | Ashish Singh | 8h |
| 10 | 1.1.2.2 | Review/update plan with key IT groups | 1d | 2012-04-15 08:00 | 2012-04-15 16:00 | 9 | 2012-04-15 08:00 | 2012-04-15 16:00 | 1d | 0d |  | Ashish Singh | 8h |
| 11 | 1.1.2.3 | Create final version of initial plan | 1d | 2012-04-16 08:00 | 2012-04-16 16:00 | 10 | 2012-04-16 08:00 | 2012-04-16 16:00 | 1d | 0d |  | Ashish Singh | 8h |
| 12 | 1.1.2.4 | Review and Sign off on the plan | 1d | 2012-04-17 08:00 | 2012-04-17 16:00 | 11 | 2012-04-17 08:00 | 2012-04-17 16:00 | 1d | 0d |  | Ashish Singh | 8h |
| 13 | 1.1.3 | **PRODUCT INSTALLATION** | 5d | 2012-05-20 08:00 | 2012-05-24 16:00 |  | 2012-05-20 08:00 | 2012-05-24 16:00 | 5d | 0d |  |  | 32h |
| 14 | 1.1.3.1 | **Development Environment** | 2d | 2012-05-20 08:00 | 2012-05-21 16:00 |  | 2012-05-20 08:00 | 2012-05-21 16:00 | 2d | 0d |  |  | 8h |
| 15 | 1.1.3.1.1 | Install hardware / software | 1d | 2012-05-20 08:00 | 2012-05-20 16:00 | 56 | 2012-05-20 08:00 | 2012-05-20 16:00 | 1d | 0d |  | Ashish Singh | 8h |
| 16 | 1.1.3.1.2 | Configure hardware / software | 1d | 2012-05-21 08:00 | 2012-05-21 16:00 | 15 | 2012-05-21 08:00 | 2012-05-21 16:00 | 1d | 0d |  |  |  |
| 17 | 1.1.3.2 | **Production & Staging Environment** | 3d | 2012-05-22 08:00 | 2012-05-24 16:00 |  | 2012-05-22 08:00 | 2012-05-24 16:00 | 3d | 0d |  |  | 24h |
| 18 | 1.1.3.2.1 | Install hardware / software | 1d | 2012-05-22 08:00 | 2012-05-22 16:00 | 16 | 2012-05-22 08:00 | 2012-05-22 16:00 | 1d | 0d |  | Ashish Singh | 8h |
| 19 | 1.1.3.2.2 | Configure hardware / software | 2d | 2012-05-23 08:00 | 2012-05-24 16:00 | 18 | 2012-05-23 08:00 | 2012-05-24 16:00 | 2d | 0d |  | Ashish Singh | 16h |
| 20 | 1.1.4 | **SECURITY CONFIGURATION** | 4d | 2012-05-27 08:00 | 2012-05-30 16:00 |  | 2012-05-27 08:00 | 2012-05-30 16:00 | 4d | 0d |  |  | 32h |
| 21 | 1.1.4.1 | Create Security Plan | 2d | 2012-05-27 08:00 | 2012-05-28 16:00 | 19 | 2012-05-27 08:00 | 2012-05-28 16:00 | 2d | 0d |  | Ashish Singh | 16h |
| 22 | 1.1.4.2 | Set up administrator/user security for the model | 2d | 2012-05-29 08:00 | 2012-05-30 16:00 | 21 | 2012-05-29 08:00 | 2012-05-30 16:00 | 2d | 0d |  | Ashish Singh | 16h |
| 23 | 1.1.5 | **TESTING** | 3d | 2012-05-31 08:00 | 2012-06-04 16:00 |  | 2012-05-31 08:00 | 2012-06-04 16:00 | 3d | 0d |  |  | 24h |
| 24 | 1.1.5.1 | Testing of the complete environment | 2d | 2012-05-31 08:00 | 2012-06-03 16:00 | 22 | 2012-05-31 08:00 | 2012-06-03 16:00 | 2d | 0d |  | Ashish Singh | 16h |
| 25 | 1.1.5.2 | User acceptance/project review | 1d | 2012-06-04 08:00 | 2012-06-04 16:00 | 24 | 2012-06-04 08:00 | 2012-06-04 16:00 | 1d | 0d |  | Ashish Singh | 8h |

| ID | WBS | Task | Duration | Start | Finish | Predecessors | Baseline start | Baseline finish | Baseline duration | Total slack | Constraint | Resources | Work |
| --- | --- | --- | --- | --- | --- | --- | --- | --- | --- | --- | --- | --- | --- |
| 26 | 1.2 | **Phase 2 A - Finance** | 87d | 2012-04-15 08:00 | 2012-08-13 16:00 |  | 2012-04-15 08:00 | 2012-08-13 16:00 | 87d | 0d |  |  | 1016h |
| 27 | 1.2.1 | **BUSINESS REQUIREMENTS DETAILING** | 5d | 2012-04-15 08:00 | 2012-04-19 16:00 |  | 2012-04-15 08:00 | 2012-04-19 16:00 | 5d | 0d |  |  | 48h |
| 28 | 1.2.1.1 | Create detailed Business Requirement document | 3d | 2012-04-15 08:00 | 2012-04-17 16:00 |  | 2012-04-15 08:00 | 2012-04-17 16:00 | 3d | 0d | start no earlier than 2012-04-15 08:00 | Mithun Desai | 24h |
| 29 | 1.2.1.2 | Review the document with the Business | 1d | 2012-04-18 08:00 | 2012-04-18 16:00 | 28, 12 | 2012-04-18 08:00 | 2012-04-18 16:00 | 1d | 0d |  | Mithun Desai; Ashish Singh | 16h |
| 30 | 1.2.1.3 | Finalize the document with the feedback | 1d | 2012-04-19 08:00 | 2012-04-19 16:00 | 29 | 2012-04-19 08:00 | 2012-04-19 16:00 | 1d | 0d |  | Mithun Desai | 8h |
| 31 | 1.2.2 | **DATA SOURCE ANALYSIS (Dynamics, AIMS, RADIXX)** | 4d | 2012-04-22 08:00 | 2012-04-25 16:00 |  | 2012-04-22 08:00 | 2012-04-25 16:00 | 4d | 0d |  |  | 64h |
| 32 | 1.2.2.1 | Assess the data quality of operational system | 2d | 2012-04-22 08:00 | 2012-04-23 16:00 | 30 | 2012-04-22 08:00 | 2012-04-23 16:00 | 2d | 0d |  | Ashish Singh; Mithun Desai | 32h |
| 33 | 1.2.2.2 | Analyze the source data quality | 1d | 2012-04-24 08:00 | 2012-04-24 16:00 | 32 | 2012-04-24 08:00 | 2012-04-24 16:00 | 1d | 0d |  | Ashish Singh; Mithun Desai | 16h |
| 34 | 1.2.2.3 | Resolve data discrepancies | 1d | 2012-04-25 08:00 | 2012-04-25 16:00 | 33 | 2012-04-25 08:00 | 2012-04-25 16:00 | 1d | 0d |  | Ashish Singh; Mithun Desai | 16h |
| 35 | 1.2.3 | **DIMENSIONAL DATA MODEL REVIEW** | 3d | 2012-04-26 08:00 | 2012-04-30 16:00 |  | 2012-04-26 08:00 | 2012-04-30 16:00 | 3d | 0d |  |  | 48h |
| 36 | 1.2.3.1 | Design detailed dimensional model (GL, P&L, AR, AP, Taxes, Billing & Payment) | 2d | 2012-04-26 08:00 | 2012-04-29 16:00 | 34 | 2012-04-26 08:00 | 2012-04-29 16:00 | 2d | 0d |  | Ashish Singh; Mithun Desai | 32h |
| 37 | 1.2.3.2 | Review data model with IT and business user | 1d | 2012-04-30 08:00 | 2012-04-30 16:00 | 36 | 2012-04-30 08:00 | 2012-04-30 16:00 | 1d | 0d |  | Ashish Singh; Mithun Desai | 16h |
| 38 | 1.2.4 | **LOGICAL DATABASE DESIGN** | 2d | 2012-05-01 08:00 | 2012-05-02 16:00 |  | 2012-05-01 08:00 | 2012-05-02 16:00 | 2d | 0d |  |  | 32h |
| 39 | 1.2.4.1 | Map the dimensional model to logical design | 1d | 2012-05-01 08:00 | 2012-05-01 16:00 | 37 | 2012-05-01 08:00 | 2012-05-01 16:00 | 1d | 0d |  | Ashish Singh; Mithun Desai | 16h |
| 40 | 1.2.4.2 | Document the logical design | 1d | 2012-05-02 08:00 | 2012-05-02 16:00 | 39 | 2012-05-02 08:00 | 2012-05-02 16:00 | 1d | 0d |  | Ashish Singh; Mithun Desai | 16h |
| 41 | 1.2.5 | **PHYSICAL DATABASE DESIGN** | 4d | 2012-05-03 08:00 | 2012-05-08 16:00 |  | 2012-05-03 08:00 | 2012-05-08 16:00 | 4d | 0d |  |  | 64h |
| 42 | 1.2.5.1 | Design physical tables & column | 1d | 2012-05-03 08:00 | 2012-05-03 16:00 | 40 | 2012-05-03 08:00 | 2012-05-03 16:00 | 1d | 0d |  | Ashish Singh; Dixit Sukhadiya | 16h |
| 43 | 1.2.5.2 | Finalize the source to target map | 1d | 2012-05-06 08:00 | 2012-05-06 16:00 | 42 | 2012-05-06 08:00 | 2012-05-06 16:00 | 1d | 0d |  | Ashish Singh; Dixit Sukhadiya | 16h |
| 44 | 1.2.5.3 | Estimate database size | 0.5d | 2012-05-07 08:00 | 2012-05-07 12:00 | 43 | 2012-05-07 08:00 | 2012-05-07 12:00 | 0.5d | 0d |  | Ashish Singh; Dixit Sukhadiya | 8h |
| 45 | 1.2.5.4 | Design development database | 0.5d | 2012-05-07 12:00 | 2012-05-07 16:00 | 44 | 2012-05-07 12:00 | 2012-05-07 16:00 | 0.5d | 0d |  | Ashish Singh; Dixit Sukhadiya | 8h |
| 46 | 1.2.5.5 | Design auditing and staging table | 0.5d | 2012-05-08 08:00 | 2012-05-08 12:00 | 45 | 2012-05-08 08:00 | 2012-05-08 12:00 | 0.5d | 0d |  | Ashish Singh; Dixit Sukhadiya | 8h |
| 47 | 1.2.5.6 | Develop initial index/partitioning and aggregation plan | 0.5d | 2012-05-08 12:00 | 2012-05-08 16:00 | 46 | 2012-05-08 12:00 | 2012-05-08 16:00 | 0.5d | 0d |  | Ashish Singh; Dixit Sukhadiya | 8h |
| 48 | 1.2.6 | **PHYSICAL DATABASE IMPLEMENTATION** | 4d | 2012-05-09 08:00 | 2012-05-14 16:00 |  | 2012-05-09 08:00 | 2012-05-14 16:00 | 4d | 0d |  |  | 64h |
| 49 | 1.2.6.1 | Build physical storage structure | 1d | 2012-05-09 08:00 | 2012-05-09 16:00 | 47 | 2012-05-09 08:00 | 2012-05-09 16:00 | 1d | 0d |  | Ashish Singh; Dixit Sukhadiya | 16h |
| 50 | 1.2.6.2 | Implement table partitioning | 1d | 2012-05-10 08:00 | 2012-05-10 16:00 | 49 | 2012-05-10 08:00 | 2012-05-10 16:00 | 1d | 0d |  | Ashish Singh; Dixit Sukhadiya | 16h |
| 51 | 1.2.6.3 | Complete table and index sizing | 1d | 2012-05-13 08:00 | 2012-05-13 16:00 | 50 | 2012-05-13 08:00 | 2012-05-13 16:00 | 1d | 0d |  | Ashish Singh; Dixit Sukhadiya | 16h |
| 52 | 1.2.6.4 | Create tables and indexes | 1d | 2012-05-14 08:00 | 2012-05-14 16:00 | 51 | 2012-05-14 08:00 | 2012-05-14 16:00 | 1d | 0d |  | Ashish Singh; Dixit Sukhadiya | 16h |

| ID | WBS | Task | Duration | Start | Finish | Predecessors | Baseline start | Baseline finish | Baseline duration | Total slack | Resources | Work |
| --- | --- | --- | --- | --- | --- | --- | --- | --- | --- | --- | --- | --- |
| 53 | 1.2.7 | **ETL SYSTEM DESIGN** | 7d | 2012-05-15 08:00 | 2012-05-23 16:00 |  | 2012-05-15 08:00 | 2012-05-23 16:00 | 7d | 0d |  | 112h |
| 54 | 1.2.7.1 | Design high level ETL process | 1d | 2012-05-15 08:00 | 2012-05-15 16:00 | 52 | 2012-05-15 08:00 | 2012-05-15 16:00 | 1d | 0d | Ashish Singh; Dixit Sukhadiya | 16h |
| 55 | 1.2.7.2 | Develop default strategies for extracting data | 1d | 2012-05-16 08:00 | 2012-05-16 16:00 | 54 | 2012-05-16 08:00 | 2012-05-16 16:00 | 1d | 0d | Ashish Singh; Dixit Sukhadiya | 16h |
| 56 | 1.2.7.3 | Design the structure of the ETL staging area | 1d | 2012-05-17 08:00 | 2012-05-17 16:00 | 55 | 2012-05-17 08:00 | 2012-05-17 16:00 | 1d | 0d | Ashish Singh; Dixit Sukhadiya | 16h |
| 57 | 1.2.7.4 | Develop plan for maintaining dimension hierarchies | 1d | 2012-05-20 08:00 | 2012-05-20 16:00 | 56, 124 | 2012-05-20 08:00 | 2012-05-20 16:00 | 1d | 0d | Mithun Desai; Dixit Sukhadiya | 16h |
| 58 | 1.2.7.5 | Design detailed ETL plans for each table | 1d | 2012-05-21 08:00 | 2012-05-21 16:00 | 57 | 2012-05-21 08:00 | 2012-05-21 16:00 | 1d | 0d | Mithun Desai; Dixit Sukhadiya | 16h |
| 59 | 1.2.7.6 | Set up initial job sequencing | 1d | 2012-05-22 08:00 | 2012-05-22 16:00 | 58 | 2012-05-22 08:00 | 2012-05-22 16:00 | 1d | 0d | Mithun Desai; Dixit Sukhadiya | 16h |
| 60 | 1.2.7.7 | Document the ETL system specification | 1d | 2012-05-23 08:00 | 2012-05-23 16:00 | 59 | 2012-05-23 08:00 | 2012-05-23 16:00 | 1d | 0d | Mithun Desai; Dixit Sukhadiya | 16h |
| 61 | 1.2.8 | **ETL SYSTEM DEVELOPMENT** | 13d | 2012-05-24 08:00 | 2012-06-11 16:00 |  | 2012-05-24 08:00 | 2012-06-11 16:00 | 13d | 0d |  | 208h |
| 62 | 1.2.8.1 | Build dimension table surrogate key mgmt system | 1d | 2012-05-24 08:00 | 2012-05-24 16:00 | 60 | 2012-05-24 08:00 | 2012-05-24 16:00 | 1d | 0d | Mithun Desai; Dixit Sukhadiya | 16h |
| 63 | 1.2.8.2 | Build the audit system or template | 1d | 2012-05-27 08:00 | 2012-05-27 16:00 | 62 | 2012-05-27 08:00 | 2012-05-27 16:00 | 1d | 0d | Mithun Desai; Dixit Sukhadiya | 16h |
| 64 | 1.2.8.3 | Load the date table and other static dimensions | 1d | 2012-05-28 08:00 | 2012-05-28 16:00 | 63 | 2012-05-28 08:00 | 2012-05-28 16:00 | 1d | 0d | Mithun Desai; Dixit Sukhadiya | 16h |
| 65 | 1.2.8.4 | Build historic loads for type1, type 2 dimension tables; test | 2d | 2012-05-29 08:00 | 2012-05-30 16:00 | 64 | 2012-05-29 08:00 | 2012-05-30 16:00 | 2d | 0d | Mithun Desai; Dixit Sukhadiya | 32h |
| 66 | 1.2.8.5 | Build fact table surrogate key pipeline | 1d | 2012-05-31 08:00 | 2012-05-31 16:00 | 65 | 2012-05-31 08:00 | 2012-05-31 16:00 | 1d | 0d | Mithun Desai; Dixit Sukhadiya | 16h |
| 67 | 1.2.8.6 | Build historic fact table loads; test | 2d | 2012-06-03 08:00 | 2012-06-04 16:00 | 66 | 2012-06-03 08:00 | 2012-06-04 16:00 | 2d | 0d | Mithun Desai; Dixit Sukhadiya | 32h |
| 68 | 1.2.8.7 | Build dimension attrib incremental change mgmt sys | 1d | 2012-06-05 08:00 | 2012-06-05 16:00 | 67, 25 | 2012-06-05 08:00 | 2012-06-05 16:00 | 1d | 0d | Ashish Singh; Dixit Sukhadiya | 16h |
| 69 | 1.2.8.8 | Build dimension table incremental loads; test | 1d | 2012-06-06 08:00 | 2012-06-06 16:00 | 68 | 2012-06-06 08:00 | 2012-06-06 16:00 | 1d | 0d | Ashish Singh; Dixit Sukhadiya | 16h |
| 70 | 1.2.8.9 | Build fact table incremental loads; test | 1d | 2012-06-07 08:00 | 2012-06-07 16:00 | 69 | 2012-06-07 08:00 | 2012-06-07 16:00 | 1d | 0d | Ashish Singh; Dixit Sukhadiya | 16h |
| 71 | 1.2.8.10 | Write data-cleansing specifications for all critical data elements | 1d | 2012-06-10 08:00 | 2012-06-10 16:00 | 70 | 2012-06-10 08:00 | 2012-06-10 16:00 | 1d | 0d | Ashish Singh; Dixit Sukhadiya | 16h |
| 72 | 1.2.8.11 | Design, build,deploy and test ETL system automation | 1d | 2012-06-11 08:00 | 2012-06-11 16:00 | 71 | 2012-06-11 08:00 | 2012-06-11 16:00 | 1d | 0d | Ashish Singh; Dixit Sukhadiya | 16h |
| 73 | 1.2.9 | **BI APPLICATION DESIGN** | 2d | 2012-06-12 08:00 | 2012-06-13 16:00 |  | 2012-06-12 08:00 | 2012-06-13 16:00 | 2d | 0d |  | 32h |
| 74 | 1.2.9.1 | Create application standards and template | 0.5d | 2012-06-12 08:00 | 2012-06-12 12:00 | 72 | 2012-06-12 08:00 | 2012-06-12 12:00 | 0.5d | 0d | Ashish Singh; Dixit Sukhadiya | 8h |
| 75 | 1.2.9.2 | Design navigation framework | 0.5d | 2012-06-12 12:00 | 2012-06-12 16:00 | 74 | 2012-06-12 12:00 | 2012-06-12 16:00 | 0.5d | 0d | Ashish Singh; Dixit Sukhadiya | 8h |
| 76 | 1.2.9.3 | Review BI application specs with business users | 1d | 2012-06-13 08:00 | 2012-06-13 16:00 | 75 | 2012-06-13 08:00 | 2012-06-13 16:00 | 1d | 0d | Ashish Singh; Dixit Sukhadiya | 16h |

| ID | WBS | Task | Duration | Start | Finish | Predecessors | Baseline start | Baseline finish | Baseline duration | Total slack | Resources | Work |
| --- | --- | --- | --- | --- | --- | --- | --- | --- | --- | --- | --- | --- |
| 77 | 1.2.10 | **OLAP DEVELOPMENT** | 10d | 2012-06-14 08:00 | 2012-06-27 16:00 |  | 2012-06-14 08:00 | 2012-06-27 16:00 | 10d | 0d |  | 80h |
| 78 | 1.2.10.1 | Design and develop the dimensions | 3d | 2012-06-14 08:00 | 2012-06-18 16:00 | 76 | 2012-06-14 08:00 | 2012-06-18 16:00 | 3d | 0d | Dixit Sukhadiya | 24h |
| 79 | 1.2.10.2 | Design and develop the cubes | 2d | 2012-06-19 08:00 | 2012-06-20 16:00 | 78 | 2012-06-19 08:00 | 2012-06-20 16:00 | 2d | 0d | Dixit Sukhadiya | 16h |
| 80 | 1.2.10.3 | Create Calculations | 3d | 2012-06-21 08:00 | 2012-06-25 16:00 | 79 | 2012-06-21 08:00 | 2012-06-25 16:00 | 3d | 0d | Dixit Sukhadiya | 24h |
| 81 | 1.2.10.4 | Advanced cube design/Deployment | 2d | 2012-06-26 08:00 | 2012-06-27 16:00 | 80 | 2012-06-26 08:00 | 2012-06-27 16:00 | 2d | 0d | Dixit Sukhadiya | 16h |
| 82 | 1.2.11 | **DEVELOPING DASHBOARDS/REPORTS - PROTOTYPE** | 4d | 2012-06-28 08:00 | 2012-07-03 16:00 |  | 2012-06-28 08:00 | 2012-07-03 16:00 | 4d | 0d |  | 32h |
| 83 | 1.2.11.1 | Design the reports | 2d | 2012-06-28 08:00 | 2012-07-01 16:00 | 81 | 2012-06-28 08:00 | 2012-07-01 16:00 | 2d | 0d | Dixit Sukhadiya | 16h |
| 84 | 1.2.11.2 | Design the dashboards | 2d | 2012-07-02 08:00 | 2012-07-03 16:00 | 83 | 2012-07-02 08:00 | 2012-07-03 16:00 | 2d | 0d | Dixit Sukhadiya | 16h |
| 85 | 1.2.12 | **DEMONSTRATE THE PROTOTYPE** | 2d | 2012-07-04 08:00 | 2012-07-05 16:00 |  | 2012-07-04 08:00 | 2012-07-05 16:00 | 2d | 0d |  | 16h |
| 86 | 1.2.12.1 | Review reports and dashboards with the business people | 1d | 2012-07-04 08:00 | 2012-07-04 16:00 | 84 | 2012-07-04 08:00 | 2012-07-04 16:00 | 1d | 0d | Dixit Sukhadiya | 8h |
| 87 | 1.2.12.2 | Review problems and issues with the business sponsor and the business representative | 1d | 2012-07-05 08:00 | 2012-07-05 16:00 | 86 | 2012-07-05 08:00 | 2012-07-05 16:00 | 1d | 0d | Dixit Sukhadiya | 8h |
| 88 | 1.2.13 | **BI APPLICATION DEVELOPMENT** | 14d | 2012-07-08 08:00 | 2012-07-25 16:00 |  | 2012-07-08 08:00 | 2012-07-25 16:00 | 14d | 0d |  | 112h |
| 89 | 1.2.13.1 | Develop BI applications (Dashboards/Reports | 4d | 2012-07-08 08:00 | 2012-07-11 16:00 | 87 | 2012-07-08 08:00 | 2012-07-11 16:00 | 4d | 0d | Dixit Sukhadiya | 32h |
| 90 | 1.2.13.2 | Develop BI portal | 2d | 2012-07-12 08:00 | 2012-07-15 16:00 | 89 | 2012-07-12 08:00 | 2012-07-15 16:00 | 2d | 0d | Dixit Sukhadiya | 16h |
| 91 | 1.2.13.3 | Design the interfaces | 1d | 2012-07-16 08:00 | 2012-07-16 16:00 | 90 | 2012-07-16 08:00 | 2012-07-16 16:00 | 1d | 0d | Dixit Sukhadiya | 8h |
| 92 | 1.2.13.4 | Integrate the dashboards/reports in the portal | 2d | 2012-07-17 08:00 | 2012-07-18 16:00 | 91 | 2012-07-17 08:00 | 2012-07-18 16:00 | 2d | 0d | Dixit Sukhadiya | 16h |
| 93 | 1.2.13.5 | Provision security on the portal | 1d | 2012-07-19 08:00 | 2012-07-19 16:00 | 92 | 2012-07-19 08:00 | 2012-07-19 16:00 | 1d | 0d | Dixit Sukhadiya | 8h |
| 94 | 1.2.13.6 | Set up report execution scheduling | 1d | 2012-07-22 08:00 | 2012-07-22 16:00 | 93 | 2012-07-22 08:00 | 2012-07-22 16:00 | 1d | 0d | Dixit Sukhadiya | 8h |
| 95 | 1.2.13.7 | Test BI applications and verify data | 1d | 2012-07-23 08:00 | 2012-07-23 16:00 | 94 | 2012-07-23 08:00 | 2012-07-23 16:00 | 1d | 0d | Dixit Sukhadiya | 8h |
| 96 | 1.2.13.8 | Develop BI application maintenance procedures | 1d | 2012-07-24 08:00 | 2012-07-24 16:00 | 95 | 2012-07-24 08:00 | 2012-07-24 16:00 | 1d | 0d | Dixit Sukhadiya | 8h |
| 97 | 1.2.13.9 | Develop BI application deployment procedures | 1d | 2012-07-25 08:00 | 2012-07-25 16:00 | 96 | 2012-07-25 08:00 | 2012-07-25 16:00 | 1d | 0d | Dixit Sukhadiya | 8h |
| 98 | 1.2.14 | **PRE-DEPLOYMENT TESTING** | 3d | 2012-07-26 08:00 | 2012-07-30 16:00 |  | 2012-07-26 08:00 | 2012-07-30 16:00 | 3d | 0d |  | 24h |
| 99 | 1.2.14.1 | Develop a plan for implementing testing | 2d | 2012-07-26 08:00 | 2012-07-29 16:00 | 97 | 2012-07-26 08:00 | 2012-07-29 16:00 | 2d | 0d | Dixit Sukhadiya | 16h |
| 100 | 1.2.14.2 | Develop test datasets | 0.5d | 2012-07-30 08:00 | 2012-07-30 12:00 | 99 | 2012-07-30 08:00 | 2012-07-30 12:00 | 0.5d | 0d | Dixit Sukhadiya | 4h |
| 101 | 1.2.14.3 | Define test | 0.5d | 2012-07-30 12:00 | 2012-07-30 16:00 | 100 | 2012-07-30 12:00 | 2012-07-30 16:00 | 0.5d | 0d | Dixit Sukhadiya | 4h |

| ID | WBS | Task | Duration | Start | Finish | Predecessors | Baseline start | Baseline finish | Baseline duration | Total slack | Free slack | Resources | Work |
| --- | --- | --- | --- | --- | --- | --- | --- | --- | --- | --- | --- | --- | --- |
| 102 | 1.2.15 | **DATA AND PROCESS TESTING** | 3d | 2012-07-31 08:00 | 2012-08-02 16:00 |  | 2012-07-31 08:00 | 2012-08-02 16:00 | 3d | 0d |  |  | 24h |
| 103 | 1.2.15.1 | Test historic load | 0.5d | 2012-07-31 08:00 | 2012-07-31 12:00 | 101 | 2012-07-31 08:00 | 2012-07-31 12:00 | 0.5d | 0d |  | Dixit Sukhadiya | 4h |
| 104 | 1.2.15.2 | Test primary dataset for incremental load | 0.5d | 2012-07-31 12:00 | 2012-07-31 16:00 | 103 | 2012-07-31 12:00 | 2012-07-31 16:00 | 0.5d | 0d |  | Dixit Sukhadiya | 4h |
| 105 | 1.2.15.3 | Conduct live tests with real data | 1d | 2012-08-01 08:00 | 2012-08-01 16:00 | 104 | 2012-08-01 08:00 | 2012-08-01 16:00 | 1d | 0d |  | Dixit Sukhadiya | 8h |
| 106 | 1.2.15.4 | Test overall process and system integration | 0.5d | 2012-08-02 08:00 | 2012-08-02 12:00 | 105 | 2012-08-02 08:00 | 2012-08-02 12:00 | 0.5d | 0d |  | Dixit Sukhadiya | 4h |
| 107 | 1.2.15.5 | Test month-end or other unusual conditions | 0.5d | 2012-08-02 12:00 | 2012-08-02 16:00 | 106 | 2012-08-02 12:00 | 2012-08-02 16:00 | 0.5d | 0d |  | Dixit Sukhadiya | 4h |
| 108 | 1.2.16 | **PERFORMANCE TUNING** | 3d | 2012-08-05 08:00 | 2012-08-07 16:00 |  | 2012-08-05 08:00 | 2012-08-07 16:00 | 3d | 0d |  |  | 24h |
| 109 | 1.2.16.1 | Test conformance to Service Level Agreements | 0.5d | 2012-08-05 08:00 | 2012-08-05 12:00 | 163 | 2012-08-05 08:00 | 2012-08-05 12:00 | 0.5d | 0d |  | Ashish Singh | 4h |
| 110 | 1.2.16.2 | Test/Improve performance of data load | 0.5d | 2012-08-05 12:00 | 2012-08-05 16:00 | 109 | 2012-08-05 12:00 | 2012-08-05 16:00 | 0.5d | 0d |  | Ashish Singh | 4h |
| 111 | 1.2.16.3 | Test/Improve query performance via new indexes and/or aggregations | 1d | 2012-08-06 08:00 | 2012-08-06 16:00 | 110 | 2012-08-06 08:00 | 2012-08-06 16:00 | 1d | 0d |  | Ashish Singh | 8h |
| 112 | 1.2.16.4 | End-to-end testing of system after performance-related changes | 0.5d | 2012-08-07 08:00 | 2012-08-07 12:00 | 111 | 2012-08-07 08:00 | 2012-08-07 12:00 | 0.5d | 0d |  | Ashish Singh | 4h |
| 113 | 1.2.16.5 | User acceptance/project review | 0.5d | 2012-08-07 12:00 | 2012-08-07 16:00 | 112 | 2012-08-07 12:00 | 2012-08-07 16:00 | 0.5d | 0d |  | Ashish Singh | 4h |
| 114 | 1.2.17 | **TRAINING FOR END USERS** | 2d | 2012-08-08 08:00 | 2012-08-09 16:00 |  | 2012-08-08 08:00 | 2012-08-09 16:00 | 2d | 0d |  |  | 16h |
| 115 | 1.2.17.1 | Training Environment Deployment | 1d | 2012-08-08 08:00 | 2012-08-08 16:00 | 113 | 2012-08-08 08:00 | 2012-08-08 16:00 | 1d | 0d |  | Ashish Singh | 8h |
| 116 | 1.2.17.2 | Training | 1d | 2012-08-09 08:00 | 2012-08-09 16:00 | 115 | 2012-08-09 08:00 | 2012-08-09 16:00 | 1d | 0d |  | Ashish Singh | 8h |
| 117 | 1.2.18 | **FINAL ACCEPTANCE** | 2d | 2012-08-12 08:00 | 2012-08-13 16:00 |  | 2012-08-12 08:00 | 2012-08-13 16:00 | 2d | 0d |  |  | 16h |
| 118 | 1.2.18.1 | Official Presentation | 1d | 2012-08-12 08:00 | 2012-08-12 16:00 | 116 | 2012-08-12 08:00 | 2012-08-12 16:00 | 1d | 0d |  | Ashish Singh | 8h |
| 119 | 1.2.18.2 | Phase Closure | 1d | 2012-08-13 08:00 | 2012-08-13 16:00 | 118 | 2012-08-13 08:00 | 2012-08-13 16:00 | 1d | 0d |  | Ashish Singh | 8h |
| 120 | 1.3 | **Phase 2 B - Operations** | 108.5d | 2012-05-03 08:00 | 2012-10-02 12:00 |  | 2012-05-03 08:00 | 2012-10-02 12:00 | 108.5d | 5d |  |  | 1328h |
| 121 | 1.3.1 | **BUSINESS REQUIREMENTS DETAILING** | 6d | 2012-05-03 08:00 | 2012-05-10 16:00 |  | 2012-05-03 08:00 | 2012-05-10 16:00 | 6d | 5d |  |  | 48h |
| 122 | 1.3.1.1 | Create detailed Business Requirement document | 3d | 2012-05-03 08:00 | 2012-05-07 16:00 | 40 | 2012-05-03 08:00 | 2012-05-07 16:00 | 3d | 5d | 0d | Mithun Desai | 24h |
| 123 | 1.3.1.2 | Review the document with the Business | 1d | 2012-05-08 08:00 | 2012-05-08 16:00 | 122 | 2012-05-08 08:00 | 2012-05-08 16:00 | 1d | 5d | 0d | Mithun Desai | 8h |
| 124 | 1.3.1.3 | Finalize the document with the feedback | 2d | 2012-05-09 08:00 | 2012-05-10 16:00 | 123 | 2012-05-09 08:00 | 2012-05-10 16:00 | 2d | 5d |  | Mithun Desai | 16h |
| 125 | 1.3.2 | **DATA SOURCE ANALYSIS (EFOS, FlyWize, AIMS, ONBOS, LUMEXIS, SABRE, AMOS, MACS, Qpulse, Aerobytes)** | 9d | 2012-06-05 08:00 | 2012-06-17 16:00 |  | 2012-06-05 08:00 | 2012-06-17 16:00 | 9d | 0d |  |  | 88h |
| 126 | 1.3.2.1 | Assess the data quality of operational systems | 5d | 2012-06-05 08:00 | 2012-06-11 16:00 | 67 | 2012-06-05 08:00 | 2012-06-11 16:00 | 5d | 0d |  | Mithun Desai | 40h |
| 127 | 1.3.2.2 | Analyze the source data quality | 2d | 2012-06-12 08:00 | 2012-06-13 16:00 | 126 | 2012-06-12 08:00 | 2012-06-13 16:00 | 2d | 0d |  | Mithun Desai | 16h |
| 128 | 1.3.2.3 | Resolve data discrepancies | 2d | 2012-06-14 08:00 | 2012-06-17 16:00 | 76, 127 | 2012-06-14 08:00 | 2012-06-17 16:00 | 2d | 0d |  | Ashish Singh; Mithun Desai | 32h |

| ID | WBS | Task | Duration | Start | Finish | Predecessors | Baseline start | Baseline finish | Baseline duration | Total slack | Resources | Work |
| --- | --- | --- | --- | --- | --- | --- | --- | --- | --- | --- | --- | --- |
| 129 | 1.3.3 | **DIMENSIONAL DATA MODEL REVIEW** | 4d | 2012-06-18 08:00 | 2012-06-21 16:00 |  | 2012-06-18 08:00 | 2012-06-21 16:00 | 4d | 0d |  | 64h |
| 130 | 1.3.3.1 | Design detailed dimensional model (Flight Ops, Crew Sched, Inflight Ret, Network Cont, Network Plan, Engineering, Airport Services | 3d | 2012-06-18 08:00 | 2012-06-20 16:00 | 128 | 2012-06-18 08:00 | 2012-06-20 16:00 | 3d | 0d | Ashish Singh; Mithun Desai | 48h |
| 131 | 1.3.3.2 | Review data model with IT and business users | 1d | 2012-06-21 08:00 | 2012-06-21 16:00 | 130 | 2012-06-21 08:00 | 2012-06-21 16:00 | 1d | 0d | Ashish Singh; Mithun Desai | 16h |
| 132 | 1.3.4 | **LOGICAL DATABASE DESIGN** | 2d | 2012-06-24 08:00 | 2012-06-25 16:00 |  | 2012-06-24 08:00 | 2012-06-25 16:00 | 2d | 0d |  | 32h |
| 133 | 1.3.4.1 | Map the dimensional model to logical design | 1d | 2012-06-24 08:00 | 2012-06-24 16:00 | 131 | 2012-06-24 08:00 | 2012-06-24 16:00 | 1d | 0d | Ashish Singh; Mithun Desai | 16h |
| 134 | 1.3.4.2 | Document the logical design | 1d | 2012-06-25 08:00 | 2012-06-25 16:00 | 133 | 2012-06-25 08:00 | 2012-06-25 16:00 | 1d | 0d | Ashish Singh; Mithun Desai | 16h |
| 135 | 1.3.5 | **PHYSICAL DATABASE DESIGN** | 3d | 2012-06-26 08:00 | 2012-06-28 16:00 |  | 2012-06-26 08:00 | 2012-06-28 16:00 | 3d | 0d |  | 48h |
| 136 | 1.3.5.1 | Design physical tables & columns | 0.5d | 2012-06-26 08:00 | 2012-06-26 12:00 | 134 | 2012-06-26 08:00 | 2012-06-26 12:00 | 0.5d | 0d | Ashish Singh; Mithun Desai | 8h |
| 137 | 1.3.5.2 | Finalize the source to target map | 0.5d | 2012-06-26 12:00 | 2012-06-26 16:00 | 136 | 2012-06-26 12:00 | 2012-06-26 16:00 | 0.5d | 0d | Ashish Singh; Mithun Desai | 8h |
| 138 | 1.3.5.3 | Estimate database siz | 0.5d | 2012-06-27 08:00 | 2012-06-27 12:00 | 137 | 2012-06-27 08:00 | 2012-06-27 12:00 | 0.5d | 0d | Ashish Singh; Mithun Desai | 8h |
| 139 | 1.3.5.4 | Design development database | 0.5d | 2012-06-27 12:00 | 2012-06-27 16:00 | 138 | 2012-06-27 12:00 | 2012-06-27 16:00 | 0.5d | 0d | Ashish Singh; Mithun Desai | 8h |
| 140 | 1.3.5.5 | Design auditing and staging table | 0.5d | 2012-06-28 08:00 | 2012-06-28 12:00 | 139 | 2012-06-28 08:00 | 2012-06-28 12:00 | 0.5d | 0d | Ashish Singh; Mithun Desai | 8h |
| 141 | 1.3.5.6 | Develop initial index/partitioning and aggregation plan | 0.5d | 2012-06-28 12:00 | 2012-06-28 16:00 | 140 | 2012-06-28 12:00 | 2012-06-28 16:00 | 0.5d | 0d | Ashish Singh; Mithun Desai | 8h |
| 142 | 1.3.6 | **PHYSICAL DATABASE IMPLEMENTATION** | 2d | 2012-07-01 08:00 | 2012-07-02 16:00 |  | 2012-07-01 08:00 | 2012-07-02 16:00 | 2d | 0d |  | 32h |
| 143 | 1.3.6.1 | Build physical storage structure | 0.5d | 2012-07-01 08:00 | 2012-07-01 12:00 | 141 | 2012-07-01 08:00 | 2012-07-01 12:00 | 0.5d | 0d | Ashish Singh; Mithun Desai | 8h |
| 144 | 1.3.6.2 | Implement table partitioning | 0.5d | 2012-07-01 12:00 | 2012-07-01 16:00 | 143 | 2012-07-01 12:00 | 2012-07-01 16:00 | 0.5d | 0d | Ashish Singh; Mithun Desai | 8h |
| 145 | 1.3.6.3 | Complete table and index sizing | 0.5d | 2012-07-02 08:00 | 2012-07-02 12:00 | 144 | 2012-07-02 08:00 | 2012-07-02 12:00 | 0.5d | 0d | Ashish Singh; Mithun Desai | 8h |
| 146 | 1.3.6.4 | Create tables and indexes | 0.5d | 2012-07-02 12:00 | 2012-07-02 16:00 | 145 | 2012-07-02 12:00 | 2012-07-02 16:00 | 0.5d | 0d | Ashish Singh; Mithun Desai | 8h |
| 147 | 1.3.7 | **ETL SYSTEM DESIGN** | 10d | 2012-07-03 08:00 | 2012-07-16 16:00 |  | 2012-07-03 08:00 | 2012-07-16 16:00 | 10d | 0d |  | 160h |
| 148 | 1.3.7.1 | Design high level ETL process | 2d | 2012-07-03 08:00 | 2012-07-04 16:00 | 146 | 2012-07-03 08:00 | 2012-07-04 16:00 | 2d | 0d | Ashish Singh; Mithun Desai | 32h |
| 149 | 1.3.7.2 | Develop default strategies for extracting data | 3d | 2012-07-05 08:00 | 2012-07-09 16:00 | 148 | 2012-07-05 08:00 | 2012-07-09 16:00 | 3d | 0d | Ashish Singh; Mithun Desai | 48h |
| 150 | 1.3.7.3 | Design the structure of the ETL staging area | 1d | 2012-07-10 08:00 | 2012-07-10 16:00 | 149 | 2012-07-10 08:00 | 2012-07-10 16:00 | 1d | 0d | Ashish Singh; Mithun Desai | 16h |
| 151 | 1.3.7.4 | Develop plan for maintaining dimension hierarchies | 1d | 2012-07-11 08:00 | 2012-07-11 16:00 | 150 | 2012-07-11 08:00 | 2012-07-11 16:00 | 1d | 0d | Ashish Singh; Mithun Desai | 16h |
| 152 | 1.3.7.5 | Design detailed ETL plans for each table | 1d | 2012-07-12 08:00 | 2012-07-12 16:00 | 151 | 2012-07-12 08:00 | 2012-07-12 16:00 | 1d | 0d | Ashish Singh; Mithun Desai | 16h |
| 153 | 1.3.7.6 | Set up initial job sequencing | 1d | 2012-07-15 08:00 | 2012-07-15 16:00 | 152 | 2012-07-15 08:00 | 2012-07-15 16:00 | 1d | 0d | Ashish Singh; Mithun Desai | 16h |
| 154 | 1.3.7.7 | Document the ETL system specification | 1d | 2012-07-16 08:00 | 2012-07-16 16:00 | 153 | 2012-07-16 08:00 | 2012-07-16 16:00 | 1d | 0d | Ashish Singh; Mithun Desai | 16h |

| ID | WBS | Task | Duration | Start | Finish | Predecessors | Baseline start | Baseline finish | Baseline duration | Total slack | Resources | Work |
| --- | --- | --- | --- | --- | --- | --- | --- | --- | --- | --- | --- | --- |
| 155 | 1.3.8 | **ETL SYSTEM DEVELOPMENT** | 17d | 2012-07-17 08:00 | 2012-08-08 16:00 |  | 2012-07-17 08:00 | 2012-08-08 16:00 | 17d | 0d |  | 272h |
| 156 | 1.3.8.1 | Build dimension table surrogate key mgmt system | 1d | 2012-07-17 08:00 | 2012-07-17 16:00 | 154 | 2012-07-17 08:00 | 2012-07-17 16:00 | 1d | 0d | Ashish Singh; Mithun Desai | 16h |
| 157 | 1.3.8.2 | Build the audit system or template | 2d | 2012-07-18 08:00 | 2012-07-19 16:00 | 156 | 2012-07-18 08:00 | 2012-07-19 16:00 | 2d | 0d | Ashish Singh; Mithun Desai | 32h |
| 158 | 1.3.8.3 | Load the date table and other static dimensions | 1d | 2012-07-22 08:00 | 2012-07-22 16:00 | 157 | 2012-07-22 08:00 | 2012-07-22 16:00 | 1d | 0d | Ashish Singh; Mithun Desai | 16h |
| 159 | 1.3.8.4 | Build historic loads for type1, type 2 dimension tables; test | 3d | 2012-07-23 08:00 | 2012-07-25 16:00 | 158 | 2012-07-23 08:00 | 2012-07-25 16:00 | 3d | 0d | Ashish Singh; Mithun Desai | 48h |
| 160 | 1.3.8.5 | Build fact table surrogate key pipeline | 2d | 2012-07-26 08:00 | 2012-07-29 16:00 | 159 | 2012-07-26 08:00 | 2012-07-29 16:00 | 2d | 0d | Ashish Singh; Mithun Desai | 32h |
| 161 | 1.3.8.6 | Build historic fact table loads; test | 1d | 2012-07-30 08:00 | 2012-07-30 16:00 | 160 | 2012-07-30 08:00 | 2012-07-30 16:00 | 1d | 0d | Ashish Singh; Mithun Desai | 16h |
| 162 | 1.3.8.7 | Build dimension attrib incremental change mgmt sys | 1d | 2012-07-31 08:00 | 2012-07-31 16:00 | 161 | 2012-07-31 08:00 | 2012-07-31 16:00 | 1d | 0d | Ashish Singh; Mithun Desai | 16h |
| 163 | 1.3.8.8 | Build dimension table incremental loads; test | 2d | 2012-08-01 08:00 | 2012-08-02 16:00 | 162 | 2012-08-01 08:00 | 2012-08-02 16:00 | 2d | 0d | Ashish Singh; Mithun Desai | 32h |
| 164 | 1.3.8.9 | Build fact table incremental loads; tes | 1d | 2012-08-05 08:00 | 2012-08-05 16:00 | 163, 107 | 2012-08-05 08:00 | 2012-08-05 16:00 | 1d | 0d | Dixit Sukhadiya; Mithun Desai | 16h |
| 165 | 1.3.8.10 | Write data-cleansing specifications for all critical data elements | 1d | 2012-08-06 08:00 | 2012-08-06 16:00 | 164 | 2012-08-06 08:00 | 2012-08-06 16:00 | 1d | 0d | Dixit Sukhadiya; Mithun Desai | 16h |
| 166 | 1.3.8.11 | Design, build,deploy and test ETL system automation | 2d | 2012-08-07 08:00 | 2012-08-08 16:00 | 165 | 2012-08-07 08:00 | 2012-08-08 16:00 | 2d | 0d | Dixit Sukhadiya; Mithun Desai | 32h |
| 167 | 1.3.9 | **BI APPLICATION DESIGN** | 3d | 2012-08-09 08:00 | 2012-08-13 16:00 |  | 2012-08-09 08:00 | 2012-08-13 16:00 | 3d | 0d |  | 48h |
| 168 | 1.3.9.1 | Create application standards and template | 1d | 2012-08-09 08:00 | 2012-08-09 16:00 | 166 | 2012-08-09 08:00 | 2012-08-09 16:00 | 1d | 0d | Dixit Sukhadiya; Mithun Desai | 16h |
| 169 | 1.3.9.2 | Design navigation framework | 1d | 2012-08-12 08:00 | 2012-08-12 16:00 | 168 | 2012-08-12 08:00 | 2012-08-12 16:00 | 1d | 0d | Dixit Sukhadiya; Mithun Desai | 16h |
| 170 | 1.3.9.3 | Review BI application specs with business users | 1d | 2012-08-13 08:00 | 2012-08-13 16:00 | 169 | 2012-08-13 08:00 | 2012-08-13 16:00 | 1d | 0d | Dixit Sukhadiya; Mithun Desai | 16h |
| 171 | 1.3.10 | **OLAP DEVELOPMENT** | 8.5d | 2012-08-14 08:00 | 2012-08-26 12:00 |  | 2012-08-14 08:00 | 2012-08-26 12:00 | 8.5d | 0d |  | 136h |
| 172 | 1.3.10.1 | Design and develop the dimensions | 1.5d | 2012-08-14 08:00 | 2012-08-15 12:00 | 119, 170 | 2012-08-14 08:00 | 2012-08-15 12:00 | 1.5d | 0d | Ashish Singh; Dixit Sukhadiya | 24h |
| 173 | 1.3.10.2 | Design and develop the cube | 2d | 2012-08-15 12:00 | 2012-08-19 12:00 | 172 | 2012-08-15 12:00 | 2012-08-19 12:00 | 2d | 0d | Ashish Singh; Dixit Sukhadiya | 32h |
| 174 | 1.3.10.3 | Create Calculations | 3d | 2012-08-19 12:00 | 2012-08-22 12:00 | 173 | 2012-08-19 12:00 | 2012-08-22 12:00 | 3d | 0d | Ashish Singh; Dixit Sukhadiya | 48h |
| 175 | 1.3.10.4 | Advanced cube design/Deployment | 2d | 2012-08-22 12:00 | 2012-08-26 12:00 | 174 | 2012-08-22 12:00 | 2012-08-26 12:00 | 2d | 0d | Ashish Singh; Dixit Sukhadiya | 32h |
| 176 | 1.3.11 | **DEVELOPING DASHBOARDS/REPORTS - PROTOTYPE** | 2d | 2012-08-26 12:00 | 2012-08-28 12:00 |  | 2012-08-26 12:00 | 2012-08-28 12:00 | 2d | 0d |  | 32h |
| 177 | 1.3.11.1 | Design the reports | 1d | 2012-08-26 12:00 | 2012-08-27 12:00 | 175 | 2012-08-26 12:00 | 2012-08-27 12:00 | 1d | 0d | Ashish Singh; Dixit Sukhadiya | 16h |
| 178 | 1.3.11.2 | Design the dashboards | 1d | 2012-08-27 12:00 | 2012-08-28 12:00 | 177 | 2012-08-27 12:00 | 2012-08-28 12:00 | 1d | 0d | Ashish Singh; Dixit Sukhadiya | 16h |

| ID | WBS | Task | Duration | Start | Finish | Predecessors | Baseline start | Baseline finish | Baseline duration | Total slack | Resources | Work |
| --- | --- | --- | --- | --- | --- | --- | --- | --- | --- | --- | --- | --- |
| 179 | 1.3.12 | **DEMONSTRATE THE PROTOTYPE** | 1d | 2012-08-28 12:00 | 2012-08-29 12:00 |  | 2012-08-28 12:00 | 2012-08-29 12:00 | 1d | 0d |  | 16h |
| 180 | 1.3.12.1 | Review reports and dashboards with the business people | 0.5d | 2012-08-28 12:00 | 2012-08-28 16:00 | 178 | 2012-08-28 12:00 | 2012-08-28 16:00 | 0.5d | 0d | Ashish Singh; Dixit Sukhadiya | 8h |
| 181 | 1.3.12.2 | Review problems and issues with the business sponsor and the business representative | 0.5d | 2012-08-29 08:00 | 2012-08-29 12:00 | 180 | 2012-08-29 08:00 | 2012-08-29 12:00 | 0.5d | 0d | Ashish Singh; Dixit Sukhadiya | 8h |
| 182 | 1.3.13 | **BI APPLICATION DEVELOPMENT** | 11d | 2012-08-29 12:00 | 2012-09-13 12:00 |  | 2012-08-29 12:00 | 2012-09-13 12:00 | 11d | 0d |  | 176h |
| 183 | 1.3.13.1 | Develop BI applications (Dashboards/Reports) | 3d | 2012-08-29 12:00 | 2012-09-03 12:00 | 181 | 2012-08-29 12:00 | 2012-09-03 12:00 | 3d | 0d | Ashish Singh; Dixit Sukhadiya | 48h |
| 184 | 1.3.13.2 | Develop BI portal | 1d | 2012-09-03 12:00 | 2012-09-04 12:00 | 183 | 2012-09-03 12:00 | 2012-09-04 12:00 | 1d | 0d | Ashish Singh; Dixit Sukhadiya | 16h |
| 185 | 1.3.13.3 | Design the interfaces | 1d | 2012-09-04 12:00 | 2012-09-05 12:00 | 184 | 2012-09-04 12:00 | 2012-09-05 12:00 | 1d | 0d | Ashish Singh; Dixit Sukhadiya | 16h |
| 186 | 1.3.13.4 | Integrate the dashboards/reports in the portal | 1d | 2012-09-05 12:00 | 2012-09-06 12:00 | 185 | 2012-09-05 12:00 | 2012-09-06 12:00 | 1d | 0d | Ashish Singh; Dixit Sukhadiya | 16h |
| 187 | 1.3.13.5 | Provision security on the portal | 1d | 2012-09-06 12:00 | 2012-09-09 12:00 | 186 | 2012-09-06 12:00 | 2012-09-09 12:00 | 1d | 0d | Ashish Singh; Dixit Sukhadiya | 16h |
| 188 | 1.3.13.6 | Set up report execution scheduling | 1d | 2012-09-09 12:00 | 2012-09-10 12:00 | 187 | 2012-09-09 12:00 | 2012-09-10 12:00 | 1d | 0d | Ashish Singh; Dixit Sukhadiya | 16h |
| 189 | 1.3.13.7 | Test BI applications and verify data | 1d | 2012-09-10 12:00 | 2012-09-11 12:00 | 188 | 2012-09-10 12:00 | 2012-09-11 12:00 | 1d | 0d | Ashish Singh; Dixit Sukhadiya | 16h |
| 190 | 1.3.13.8 | Develop BI application maintenance procedures | 1d | 2012-09-11 12:00 | 2012-09-12 12:00 | 189 | 2012-09-11 12:00 | 2012-09-12 12:00 | 1d | 0d | Ashish Singh; Dixit Sukhadiya | 16h |
| 191 | 1.3.13.9 | Develop BI application deployment procedures | 1d | 2012-09-12 12:00 | 2012-09-13 12:00 | 190 | 2012-09-12 12:00 | 2012-09-13 12:00 | 1d | 0d | Ashish Singh; Dixit Sukhadiya | 16h |
| 192 | 1.3.14 | **PRE-DEPLOYMENT TESTING** | 2d | 2012-09-13 12:00 | 2012-09-17 12:00 |  | 2012-09-13 12:00 | 2012-09-17 12:00 | 2d | 0d |  | 32h |
| 193 | 1.3.14.1 | Develop a plan for implementing testing | 1d | 2012-09-13 12:00 | 2012-09-16 12:00 | 191 | 2012-09-13 12:00 | 2012-09-16 12:00 | 1d | 0d | Ashish Singh; Dixit Sukhadiya | 16h |
| 194 | 1.3.14.2 | Develop test datasets | 0.5d | 2012-09-16 12:00 | 2012-09-16 16:00 | 193 | 2012-09-16 12:00 | 2012-09-16 16:00 | 0.5d | 0d | Ashish Singh; Dixit Sukhadiya | 8h |
| 195 | 1.3.14.3 | Define test | 0.5d | 2012-09-17 08:00 | 2012-09-17 12:00 | 194 | 2012-09-17 08:00 | 2012-09-17 12:00 | 0.5d | 0d | Ashish Singh; Dixit Sukhadiya | 8h |
| 196 | 1.3.15 | **DATA AND PROCESS TESTING** | 3d | 2012-09-17 12:00 | 2012-09-20 12:00 |  | 2012-09-17 12:00 | 2012-09-20 12:00 | 3d | 0d |  | 48h |
| 197 | 1.3.15.1 | Test historic load | 0.5d | 2012-09-17 12:00 | 2012-09-17 16:00 | 195 | 2012-09-17 12:00 | 2012-09-17 16:00 | 0.5d | 0d | Ashish Singh; Dixit Sukhadiya | 8h |
| 198 | 1.3.15.2 | Test primary dataset for incremental load | 0.5d | 2012-09-18 08:00 | 2012-09-18 12:00 | 197 | 2012-09-18 08:00 | 2012-09-18 12:00 | 0.5d | 0d | Ashish Singh; Dixit Sukhadiya | 8h |
| 199 | 1.3.15.3 | Conduct live tests with real data | 1d | 2012-09-18 12:00 | 2012-09-19 12:00 | 198 | 2012-09-18 12:00 | 2012-09-19 12:00 | 1d | 0d | Ashish Singh; Dixit Sukhadiya | 16h |
| 200 | 1.3.15.4 | Test overall process and system integration | 0.5d | 2012-09-19 12:00 | 2012-09-19 16:00 | 199 | 2012-09-19 12:00 | 2012-09-19 16:00 | 0.5d | 0d | Ashish Singh; Dixit Sukhadiya | 8h |
| 201 | 1.3.15.5 | Test month-end or other unusual conditions | 0.5d | 2012-09-20 08:00 | 2012-09-20 12:00 | 200 | 2012-09-20 08:00 | 2012-09-20 12:00 | 0.5d | 0d | Ashish Singh; Dixit Sukhadiya | 8h |
| 202 | 1.3.16 | **PERFORMANCE TUNING** | 4d | 2012-09-20 12:00 | 2012-09-26 12:00 |  | 2012-09-20 12:00 | 2012-09-26 12:00 | 4d | 0d |  | 64h |
| 203 | 1.3.16.1 | Test conformance to Service Level Agreements | 1d | 2012-09-20 12:00 | 2012-09-23 12:00 | 201 | 2012-09-20 12:00 | 2012-09-23 12:00 | 1d | 0d | Ashish Singh; Dixit Sukhadiya | 16h |
| 204 | 1.3.16.2 | Test/Improve performance of data load | 1d | 2012-09-23 12:00 | 2012-09-24 12:00 | 203 | 2012-09-23 12:00 | 2012-09-24 12:00 | 1d | 0d | Ashish Singh; Dixit Sukhadiya | 16h |
| 205 | 1.3.16.3 | Test/Improve query performance via new indexes and/or aggregations | 1d | 2012-09-24 12:00 | 2012-09-25 12:00 | 204 | 2012-09-24 12:00 | 2012-09-25 12:00 | 1d | 0d | Ashish Singh; Dixit Sukhadiya | 16h |
| 206 | 1.3.16.4 | End-to-end testing of system after performance-related changes | 0.5d | 2012-09-25 12:00 | 2012-09-25 16:00 | 205 | 2012-09-25 12:00 | 2012-09-25 16:00 | 0.5d | 0d | Ashish Singh; Dixit Sukhadiya | 8h |
| 207 | 1.3.16.5 | User acceptance/project review | 0.5d | 2012-09-26 08:00 | 2012-09-26 12:00 | 206 | 2012-09-26 08:00 | 2012-09-26 12:00 | 0.5d | 0d | Ashish Singh; Dixit Sukhadiya | 8h |

| ID | WBS | Task | Duration | Start | Finish | Predecessors | Baseline start | Baseline finish | Baseline duration | Total slack | Free slack | Resources | Work |
| --- | --- | --- | --- | --- | --- | --- | --- | --- | --- | --- | --- | --- | --- |
| 208 | 1.3.17 | **TRAINING FOR END USERS** | 2d | 2012-09-26 12:00 | 2012-09-30 12:00 |  | 2012-09-26 12:00 | 2012-09-30 12:00 | 2d | 26d |  |  | 16h |
| 209 | 1.3.17.1 | Training Environment Deployment | 1d | 2012-09-26 12:00 | 2012-09-27 12:00 | 207 | 2012-09-26 12:00 | 2012-09-27 12:00 | 1d | 26d | 0d | Ashish Singh | 8h |
| 210 | 1.3.17.2 | Training | 1d | 2012-09-27 12:00 | 2012-09-30 12:00 | 209 | 2012-09-27 12:00 | 2012-09-30 12:00 | 1d | 26d | 0d | Ashish Singh | 8h |
| 211 | 1.3.18 | **FINAL ACCEPTANCE** | 2d | 2012-09-30 12:00 | 2012-10-02 12:00 |  | 2012-09-30 12:00 | 2012-10-02 12:00 | 2d | 26d |  |  | 16h |
| 212 | 1.3.18.1 | Official Presentation | 1d | 2012-09-30 12:00 | 2012-10-01 12:00 | 210 | 2012-09-30 12:00 | 2012-10-01 12:00 | 1d | 26d | 0d | Ashish Singh | 8h |
| 213 | 1.3.18.2 | Phase Closure | 1d | 2012-10-01 12:00 | 2012-10-02 12:00 | 212 | 2012-10-01 12:00 | 2012-10-02 12:00 | 1d | 26d |  | Ashish Singh | 8h |
| 214 | 1.4 | **Phase 2 C - Commercial** | 31.05d | 2012-08-14 08:00 | 2012-09-26 08:24 |  | 2012-08-14 08:00 | 2012-09-26 08:24 | 31.05d | 30.45d |  |  | 248.4h |
| 215 | 1.4.1 | **BUSINESS REQUIREMENTS DETAILING** | 3d | 2012-08-14 08:00 | 2012-08-16 16:00 |  | 2012-08-14 08:00 | 2012-08-16 16:00 | 3d | 30.45d |  |  | 24h |
| 216 | 1.4.1.1 | Create detailed Business Requirement document | 1d | 2012-08-14 08:00 | 2012-08-14 16:00 | 170 | 2012-08-14 08:00 | 2012-08-14 16:00 | 1d | 30.45d | 0d | Mithun Desai | 8h |
| 217 | 1.4.1.2 | Review the document with the Business | 1d | 2012-08-15 08:00 | 2012-08-15 16:00 | 216 | 2012-08-15 08:00 | 2012-08-15 16:00 | 1d | 30.45d | 0d | Mithun Desai | 8h |
| 218 | 1.4.1.3 | Finalize the document with the feedback | 1d | 2012-08-16 08:00 | 2012-08-16 16:00 | 217 | 2012-08-16 08:00 | 2012-08-16 16:00 | 1d | 30.45d | 0d | Mithun Desai | 8h |
| 219 | 1.4.2 | **DATA SOURCE ANALYSIS( RADIXX, Dynamics)** | 2d | 2012-08-19 08:00 | 2012-08-20 16:00 |  | 2012-08-19 08:00 | 2012-08-20 16:00 | 2d | 30.45d |  |  | 16h |
| 220 | 1.4.2.1 | Assess the data quality of operational system | 1d | 2012-08-19 08:00 | 2012-08-19 16:00 | 218 | 2012-08-19 08:00 | 2012-08-19 16:00 | 1d | 30.45d | 0d | Mithun Desai | 8h |
| 221 | 1.4.2.2 | Analyze the source data quality | 0.5d | 2012-08-20 08:00 | 2012-08-20 12:00 | 220 | 2012-08-20 08:00 | 2012-08-20 12:00 | 0.5d | 30.45d | 0d | Mithun Desai | 4h |
| 222 | 1.4.2.3 | Resolve data discrepancies | 0.5d | 2012-08-20 12:00 | 2012-08-20 16:00 | 221 | 2012-08-20 12:00 | 2012-08-20 16:00 | 0.5d | 30.45d | 0d | Mithun Desai | 4h |
| 223 | 1.4.3 | **DIMENSIONAL DATA MODEL REVIEW** | 1.25d | 2012-08-21 08:00 | 2012-08-22 10:00 |  | 2012-08-21 08:00 | 2012-08-22 10:00 | 1.25d | 30.45d |  |  | 10h |
| 224 | 1.4.3.1 | Design detailed dimensional model (Ticket Sales, Ancillary Sales) | 1d | 2012-08-21 08:00 | 2012-08-21 16:00 | 222 | 2012-08-21 08:00 | 2012-08-21 16:00 | 1d | 30.45d | 0d | Mithun Desai | 8h |
| 225 | 1.4.3.2 | Review data model with IT and business user | 0.25d | 2012-08-22 08:00 | 2012-08-22 10:00 | 224 | 2012-08-22 08:00 | 2012-08-22 10:00 | 0.25d | 30.45d | 0d | Mithun Desai | 2h |
| 226 | 1.4.4 | **LOGICAL DATABASE DESIGN** | 0.75d | 2012-08-22 10:00 | 2012-08-22 16:00 |  | 2012-08-22 10:00 | 2012-08-22 16:00 | 0.75d | 30.45d |  |  | 6h |
| 227 | 1.4.4.1 | Map the dimensional model to logical design | 0.5d | 2012-08-22 10:00 | 2012-08-22 14:00 | 225 | 2012-08-22 10:00 | 2012-08-22 14:00 | 0.5d | 30.45d | 0d | Mithun Desai | 4h |
| 228 | 1.4.4.2 | Document the logical design | 0.25d | 2012-08-22 14:00 | 2012-08-22 16:00 | 227 | 2012-08-22 14:00 | 2012-08-22 16:00 | 0.25d | 30.45d | 0d | Mithun Desai | 2h |
| 229 | 1.4.5 | **PHYSICAL DATABASE DESIGN** | 1.02d | 2012-08-23 08:00 | 2012-08-26 08:09 |  | 2012-08-23 08:00 | 2012-08-26 08:09 | 1.02d | 30.45d |  |  | 8.16h |
| 230 | 1.4.5.1 | Design physical tables & column | 0.25d | 2012-08-23 08:00 | 2012-08-23 10:00 | 228 | 2012-08-23 08:00 | 2012-08-23 10:00 | 0.25d | 30.45d | 0d | Mithun Desai | 2h |
| 231 | 1.4.5.2 | Finalize the source to target map | 0.25d | 2012-08-23 10:00 | 2012-08-23 12:00 | 230 | 2012-08-23 10:00 | 2012-08-23 12:00 | 0.25d | 30.45d | 0d | Mithun Desai | 2h |
| 232 | 1.4.5.3 | Estimate database size | 0.13d | 2012-08-23 12:00 | 2012-08-23 13:02 | 231 | 2012-08-23 12:00 | 2012-08-23 13:02 | 0.13d | 30.45d | 0d | Mithun Desai | 1.04h |
| 233 | 1.4.5.4 | Design development database | 0.13d | 2012-08-23 13:02 | 2012-08-23 14:04 | 232 | 2012-08-23 13:02 | 2012-08-23 14:04 | 0.13d | 30.45d | 0d | Mithun Desai | 1.04h |
| 234 | 1.4.5.5 | Design auditing and staging tables | 0.13d | 2012-08-23 14:04 | 2012-08-23 15:07 | 233 | 2012-08-23 14:04 | 2012-08-23 15:07 | 0.13d | 30.45d | 0d | Mithun Desai | 1.04h |
| 235 | 1.4.5.6 | Develop initial index/partitioning and aggregation plan | 0.13d | 2012-08-23 15:07 | 2012-08-26 08:09 | 234 | 2012-08-23 15:07 | 2012-08-26 08:09 | 0.13d | 30.45d | 0d | Mithun Desai | 1.04h |

| ID | WBS | Task | Duration | Start | Finish | Predecessors | Baseline start | Baseline finish | Baseline duration | Total slack | Free slack | Resources | Work |
| --- | --- | --- | --- | --- | --- | --- | --- | --- | --- | --- | --- | --- | --- |
| 236 | 1.4.6 | **PHYSICAL DATABASE IMPLEMENTATION** | 1d | 2012-08-26 08:09 | 2012-08-27 08:09 |  | 2012-08-26 08:09 | 2012-08-27 08:09 | 1d | 30.45d |  |  | 8h |
| 237 | 1.4.6.1 | Build physical storage structure | 0.25d | 2012-08-26 08:09 | 2012-08-26 10:09 | 235 | 2012-08-26 08:09 | 2012-08-26 10:09 | 0.25d | 30.45d | 0d | Mithun Desai | 2h |
| 238 | 1.4.6.2 | Implement table partitioning | 0.25d | 2012-08-26 10:09 | 2012-08-26 12:09 | 237 | 2012-08-26 10:09 | 2012-08-26 12:09 | 0.25d | 30.45d | 0d | Mithun Desai | 2h |
| 239 | 1.4.6.3 | Complete table and index sizing | 0.25d | 2012-08-26 12:09 | 2012-08-26 14:09 | 238 | 2012-08-26 12:09 | 2012-08-26 14:09 | 0.25d | 30.45d | 0d | Mithun Desai | 2h |
| 240 | 1.4.6.4 | Create tables and indexes | 0.25d | 2012-08-26 14:09 | 2012-08-27 08:09 | 239 | 2012-08-26 14:09 | 2012-08-27 08:09 | 0.25d | 30.45d | 0d | Mithun Desai | 2h |
| 241 | 1.4.7 | **ETL SYSTEM DESIGN** | 3d | 2012-08-27 08:09 | 2012-08-30 08:09 |  | 2012-08-27 08:09 | 2012-08-30 08:09 | 3d | 30.45d |  |  | 24h |
| 242 | 1.4.7.1 | Design high level ETL process | 0.5d | 2012-08-27 08:09 | 2012-08-27 12:09 | 240 | 2012-08-27 08:09 | 2012-08-27 12:09 | 0.5d | 30.45d | 0d | Mithun Desai | 4h |
| 243 | 1.4.7.2 | Develop default strategies for extracting data | 0.75d | 2012-08-27 12:09 | 2012-08-28 10:09 | 242 | 2012-08-27 12:09 | 2012-08-28 10:09 | 0.75d | 30.45d | 0d | Mithun Desai | 6h |
| 244 | 1.4.7.3 | Design the structure of the ETL staging area | 0.25d | 2012-08-28 10:09 | 2012-08-28 12:09 | 243 | 2012-08-28 10:09 | 2012-08-28 12:09 | 0.25d | 30.45d | 0d | Mithun Desai | 2h |
| 245 | 1.4.7.4 | Develop plan for maintaining dimension hierarchies | 0.25d | 2012-08-28 12:09 | 2012-08-28 14:09 | 244 | 2012-08-28 12:09 | 2012-08-28 14:09 | 0.25d | 30.45d | 0d | Mithun Desai | 2h |
| 246 | 1.4.7.5 | Design detailed ETL plans for each table | 0.5d | 2012-08-28 14:09 | 2012-08-29 10:09 | 245 | 2012-08-28 14:09 | 2012-08-29 10:09 | 0.5d | 30.45d | 0d | Mithun Desai | 4h |
| 247 | 1.4.7.6 | Set up initial job sequencing | 0.25d | 2012-08-29 10:09 | 2012-08-29 12:09 | 246 | 2012-08-29 10:09 | 2012-08-29 12:09 | 0.25d | 30.45d | 0d | Mithun Desai | 2h |
| 248 | 1.4.7.7 | Document the ETL system specification | 0.5d | 2012-08-29 12:09 | 2012-08-30 08:09 | 247 | 2012-08-29 12:09 | 2012-08-30 08:09 | 0.5d | 30.45d | 0d | Mithun Desai | 4h |
| 249 | 1.4.8 | **ETL SYSTEM DEVELOPMENT** | 5.25d | 2012-08-30 08:09 | 2012-09-06 10:09 |  | 2012-08-30 08:09 | 2012-09-06 10:09 | 5.25d | 30.45d |  |  | 42h |
| 250 | 1.4.8.1 | Build dimension table surrogate key mgmt system | 0.5d | 2012-08-30 08:09 | 2012-08-30 12:09 | 248 | 2012-08-30 08:09 | 2012-08-30 12:09 | 0.5d | 30.45d | 0d | Mithun Desai | 4h |
| 251 | 1.4.8.2 | Build the audit system or template | 0.75d | 2012-08-30 12:09 | 2012-09-02 10:09 | 250 | 2012-08-30 12:09 | 2012-09-02 10:09 | 0.75d | 30.45d | 0d | Mithun Desai | 6h |
| 252 | 1.4.8.3 | Load the date table and other static dimensions | 0.5d | 2012-09-02 10:09 | 2012-09-02 14:09 | 251 | 2012-09-02 10:09 | 2012-09-02 14:09 | 0.5d | 30.45d | 0d | Mithun Desai | 4h |
| 253 | 1.4.8.4 | Build historic loads for type1, type 2 dimension tables; test | 0.75d | 2012-09-02 14:09 | 2012-09-03 12:09 | 252 | 2012-09-02 14:09 | 2012-09-03 12:09 | 0.75d | 30.45d | 0d | Mithun Desai | 6h |
| 254 | 1.4.8.5 | Build fact table surrogate key pipeline | 0.5d | 2012-09-03 12:09 | 2012-09-04 08:09 | 253 | 2012-09-03 12:09 | 2012-09-04 08:09 | 0.5d | 30.45d | 0d | Mithun Desai | 4h |
| 255 | 1.4.8.6 | Build historic fact table loads; test | 0.25d | 2012-09-04 08:09 | 2012-09-04 10:09 | 254 | 2012-09-04 08:09 | 2012-09-04 10:09 | 0.25d | 30.45d | 0d | Mithun Desai | 2h |
| 256 | 1.4.8.7 | Build dimension attrib incremental change mgmt sys | 0.25d | 2012-09-04 10:09 | 2012-09-04 12:09 | 255 | 2012-09-04 10:09 | 2012-09-04 12:09 | 0.25d | 30.45d | 0d | Mithun Desai | 2h |
| 257 | 1.4.8.8 | Build dimension table incremental loads; test | 0.5d | 2012-09-04 12:09 | 2012-09-05 08:09 | 256 | 2012-09-04 12:09 | 2012-09-05 08:09 | 0.5d | 30.45d | 0d | Mithun Desai | 4h |
| 258 | 1.4.8.9 | Build fact table incremental loads; test | 0.25d | 2012-09-05 08:09 | 2012-09-05 10:09 | 257 | 2012-09-05 08:09 | 2012-09-05 10:09 | 0.25d | 30.45d | 0d | Mithun Desai | 2h |
| 259 | 1.4.8.10 | Write data-cleansing specifications for all critical data elements | 0.25d | 2012-09-05 10:09 | 2012-09-05 12:09 | 258 | 2012-09-05 10:09 | 2012-09-05 12:09 | 0.25d | 30.45d | 0d | Mithun Desai | 2h |
| 260 | 1.4.8.11 | Design, build,deploy and test ETL system automation | 0.75d | 2012-09-05 12:09 | 2012-09-06 10:09 | 259 | 2012-09-05 12:09 | 2012-09-06 10:09 | 0.75d | 30.45d | 0d | Mithun Desai | 6h |

| ID | WBS | Task | Duration | Start | Finish | Predecessors | Baseline start | Baseline finish | Baseline duration | Total slack | Free slack | Resources | Work |
| --- | --- | --- | --- | --- | --- | --- | --- | --- | --- | --- | --- | --- | --- |
| 261 | 1.4.9 | **BI APPLICATION DESIGN** | 0.75d | 2012-09-06 10:09 | 2012-09-09 08:09 |  | 2012-09-06 10:09 | 2012-09-09 08:09 | 0.75d | 30.45d |  |  | 6h |
| 262 | 1.4.9.1 | Create application standards and templates | 0.25d | 2012-09-06 10:09 | 2012-09-06 12:09 | 260 | 2012-09-06 10:09 | 2012-09-06 12:09 | 0.25d | 30.45d | 0d | Mithun Desai | 2h |
| 263 | 1.4.9.2 | Design navigation framework | 0.25d | 2012-09-06 12:09 | 2012-09-06 14:09 | 262 | 2012-09-06 12:09 | 2012-09-06 14:09 | 0.25d | 30.45d | 0d | Mithun Desai | 2h |
| 264 | 1.4.9.3 | Review BI application specs with business users | 0.25d | 2012-09-06 14:09 | 2012-09-09 08:09 | 263 | 2012-09-06 14:09 | 2012-09-09 08:09 | 0.25d | 30.45d | 0d | Mithun Desai | 2h |
| 265 | 1.4.10 | **OLAP DEVELOPMENT** | 3.25d | 2012-09-09 08:09 | 2012-09-12 10:09 |  | 2012-09-09 08:09 | 2012-09-12 10:09 | 3.25d | 30.45d |  |  | 26h |
| 266 | 1.4.10.1 | Design and develop the dimensions | 1.25d | 2012-09-09 08:09 | 2012-09-10 10:09 | 264 | 2012-09-09 08:09 | 2012-09-10 10:09 | 1.25d | 30.45d | 0d | Mithun Desai | 10h |
| 267 | 1.4.10.2 | Design and develop the cube | 0.5d | 2012-09-10 10:09 | 2012-09-10 14:09 | 266 | 2012-09-10 10:09 | 2012-09-10 14:09 | 0.5d | 30.45d | 0d | Mithun Desai | 4h |
| 268 | 1.4.10.3 | Create Calculations | 1d | 2012-09-10 14:09 | 2012-09-11 14:09 | 267 | 2012-09-10 14:09 | 2012-09-11 14:09 | 1d | 30.45d | 0d | Mithun Desai | 8h |
| 269 | 1.4.10.4 | Advanced cube design/Deployment | 0.5d | 2012-09-11 14:09 | 2012-09-12 10:09 | 268 | 2012-09-11 14:09 | 2012-09-12 10:09 | 0.5d | 30.45d | 0d | Mithun Desai | 4h |
| 270 | 1.4.11 | **DEVELOPING DASHBOARDS/REPORTS - PROTOTYPE** | 1d | 2012-09-12 10:09 | 2012-09-13 10:09 |  | 2012-09-12 10:09 | 2012-09-13 10:09 | 1d | 30.45d |  |  | 8h |
| 271 | 1.4.11.1 | Design the report | 0.5d | 2012-09-12 10:09 | 2012-09-12 14:09 | 269 | 2012-09-12 10:09 | 2012-09-12 14:09 | 0.5d | 30.45d | 0d | Mithun Desai | 4h |
| 272 | 1.4.11.2 | Design the dashboards | 0.5d | 2012-09-12 14:09 | 2012-09-13 10:09 | 271 | 2012-09-12 14:09 | 2012-09-13 10:09 | 0.5d | 30.45d | 0d | Mithun Desai | 4h |
| 273 | 1.4.12 | **DEMONSTRATE THE PROTOTYPE** | 0.5d | 2012-09-13 10:09 | 2012-09-13 14:09 |  | 2012-09-13 10:09 | 2012-09-13 14:09 | 0.5d | 30.45d |  |  | 4h |
| 274 | 1.4.12.1 | Review reports and dashboards with the business people | 0.25d | 2012-09-13 10:09 | 2012-09-13 12:09 | 272 | 2012-09-13 10:09 | 2012-09-13 12:09 | 0.25d | 30.45d | 0d | Mithun Desai | 2h |
| 275 | 1.4.12.2 | Review problems and issues with the business sponsor and the business representative | 0.25d | 2012-09-13 12:09 | 2012-09-13 14:09 | 274 | 2012-09-13 12:09 | 2012-09-13 14:09 | 0.25d | 30.45d | 0d | Mithun Desai | 2h |
| 276 | 1.4.13 | **BI APPLICATION DEVELOPMENT** | 4.5d | 2012-09-13 14:09 | 2012-09-20 10:09 |  | 2012-09-13 14:09 | 2012-09-20 10:09 | 4.5d | 30.45d |  |  | 36h |
| 277 | 1.4.13.1 | Develop BI applications (Dashboards/Reports | 2d | 2012-09-13 14:09 | 2012-09-17 14:09 | 275 | 2012-09-13 14:09 | 2012-09-17 14:09 | 2d | 30.45d | 0d | Mithun Desai | 16h |
| 278 | 1.4.13.2 | Develop BI portal | 0.5d | 2012-09-17 14:09 | 2012-09-18 10:09 | 277 | 2012-09-17 14:09 | 2012-09-18 10:09 | 0.5d | 30.45d | 0d | Mithun Desai | 4h |
| 279 | 1.4.13.3 | Design the interfaces | 0.25d | 2012-09-18 10:09 | 2012-09-18 12:09 | 278 | 2012-09-18 10:09 | 2012-09-18 12:09 | 0.25d | 30.45d | 0d | Mithun Desai | 2h |
| 280 | 1.4.13.4 | Integrate the dashboards/reports in the portal | 0.5d | 2012-09-18 12:09 | 2012-09-19 08:09 | 279 | 2012-09-18 12:09 | 2012-09-19 08:09 | 0.5d | 30.45d | 0d | Mithun Desai | 4h |
| 281 | 1.4.13.5 | Provision security on the portal | 0.25d | 2012-09-19 08:09 | 2012-09-19 10:09 | 280 | 2012-09-19 08:09 | 2012-09-19 10:09 | 0.25d | 30.45d | 0d | Mithun Desai | 2h |
| 282 | 1.4.13.6 | Set up report execution scheduling | 0.25d | 2012-09-19 10:09 | 2012-09-19 12:09 | 281 | 2012-09-19 10:09 | 2012-09-19 12:09 | 0.25d | 30.45d | 0d | Mithun Desai | 2h |
| 283 | 1.4.13.7 | Test BI applications and verify data | 0.25d | 2012-09-19 12:09 | 2012-09-19 14:09 | 282 | 2012-09-19 12:09 | 2012-09-19 14:09 | 0.25d | 30.45d | 0d | Mithun Desai | 2h |
| 284 | 1.4.13.8 | Develop BI application maintenance procedures | 0.25d | 2012-09-19 14:09 | 2012-09-20 08:09 | 283 | 2012-09-19 14:09 | 2012-09-20 08:09 | 0.25d | 30.45d | 0d | Mithun Desai | 2h |
| 285 | 1.4.13.9 | Develop BI application deployment procedures | 0.25d | 2012-09-20 08:09 | 2012-09-20 10:09 | 284 | 2012-09-20 08:09 | 2012-09-20 10:09 | 0.25d | 30.45d | 0d | Mithun Desai | 2h |

| ID | WBS | Task | Duration | Start | Finish | Predecessors | Baseline start | Baseline finish | Baseline duration | Total slack | Free slack | Resources | Work |
| --- | --- | --- | --- | --- | --- | --- | --- | --- | --- | --- | --- | --- | --- |
| 286 | 1.4.14 | **PRE-DEPLOYMENT TESTING** | 0.76d | 2012-09-20 10:09 | 2012-09-23 08:14 |  | 2012-09-20 10:09 | 2012-09-23 08:14 | 0.76d | 30.45d |  |  | 6.08h |
| 287 | 1.4.14.1 | Develop a plan for implementing testing | 0.5d | 2012-09-20 10:09 | 2012-09-20 14:09 | 285 | 2012-09-20 10:09 | 2012-09-20 14:09 | 0.5d | 30.45d | 0d | Mithun Desai | 4h |
| 288 | 1.4.14.2 | Develop test datasets | 0.13d | 2012-09-20 14:09 | 2012-09-20 15:12 | 287 | 2012-09-20 14:09 | 2012-09-20 15:12 | 0.13d | 30.45d | 0d | Mithun Desai | 1.04h |
| 289 | 1.4.14.3 | Define tests | 0.13d | 2012-09-20 15:12 | 2012-09-23 08:14 | 288 | 2012-09-20 15:12 | 2012-09-23 08:14 | 0.13d | 30.45d | 0d | Mithun Desai | 1.04h |
| 290 | 1.4.15 | **DATA AND PROCESS TESTING** | 1.01d | 2012-09-23 08:14 | 2012-09-24 08:19 |  | 2012-09-23 08:14 | 2012-09-24 08:19 | 1.01d | 30.45d |  |  | 8.08h |
| 291 | 1.4.15.1 | Test historic load | 0.25d | 2012-09-23 08:14 | 2012-09-23 10:14 | 289 | 2012-09-23 08:14 | 2012-09-23 10:14 | 0.25d | 30.45d | 0d | Mithun Desai | 2h |
| 292 | 1.4.15.2 | Test primary dataset for incremental load | 0.25d | 2012-09-23 10:14 | 2012-09-23 12:14 | 291 | 2012-09-23 10:14 | 2012-09-23 12:14 | 0.25d | 30.45d | 0d | Mithun Desai | 2h |
| 293 | 1.4.15.3 | Conduct live tests with real data | 0.25d | 2012-09-23 12:14 | 2012-09-23 14:14 | 292 | 2012-09-23 12:14 | 2012-09-23 14:14 | 0.25d | 30.45d | 0d | Mithun Desai | 2h |
| 294 | 1.4.15.4 | Test overall process and system integration | 0.13d | 2012-09-23 14:14 | 2012-09-23 15:16 | 293 | 2012-09-23 14:14 | 2012-09-23 15:16 | 0.13d | 30.45d | 0d | Mithun Desai | 1.04h |
| 295 | 1.4.15.5 | Test month-end or other unusual conditions | 0.13d | 2012-09-23 15:16 | 2012-09-24 08:19 | 294 | 2012-09-23 15:16 | 2012-09-24 08:19 | 0.13d | 30.45d | 0d | Mithun Desai | 1.04h |
| 296 | 1.4.16 | **PERFORMANCE TUNING** | 1.01d | 2012-09-24 08:19 | 2012-09-25 08:24 |  | 2012-09-24 08:19 | 2012-09-25 08:24 | 1.01d | 30.45d |  |  | 8.08h |
| 297 | 1.4.16.1 | Test conformance to Service Level Agreements | 0.25d | 2012-09-24 08:19 | 2012-09-24 10:19 | 295 | 2012-09-24 08:19 | 2012-09-24 10:19 | 0.25d | 30.45d | 0d | Mithun Desai | 2h |
| 298 | 1.4.16.2 | Test/Improve performance of data load | 0.25d | 2012-09-24 10:19 | 2012-09-24 12:19 | 297 | 2012-09-24 10:19 | 2012-09-24 12:19 | 0.25d | 30.45d | 0d | Mithun Desai | 2h |
| 299 | 1.4.16.3 | Test/Improve query performance via new indexes and/or aggregations | 0.25d | 2012-09-24 12:19 | 2012-09-24 14:19 | 298 | 2012-09-24 12:19 | 2012-09-24 14:19 | 0.25d | 30.45d | 0d | Mithun Desai | 2h |
| 300 | 1.4.16.4 | End-to-end testing of system after performance-related changes | 0.13d | 2012-09-24 14:19 | 2012-09-24 15:21 | 299 | 2012-09-24 14:19 | 2012-09-24 15:21 | 0.13d | 30.45d | 0d | Mithun Desai | 1.04h |
| 301 | 1.4.16.5 | User acceptance/project review | 0.13d | 2012-09-24 15:21 | 2012-09-25 08:24 | 300 | 2012-09-24 15:21 | 2012-09-25 08:24 | 0.13d | 30.45d | 0d | Mithun Desai | 1.04h |
| 302 | 1.4.17 | **TRAINING FOR END USERS** | 0.5d | 2012-09-25 08:24 | 2012-09-25 12:24 |  | 2012-09-25 08:24 | 2012-09-25 12:24 | 0.5d | 30.45d |  |  | 4h |
| 303 | 1.4.17.1 | Training Environment Deployment | 0.25d | 2012-09-25 08:24 | 2012-09-25 10:24 | 301 | 2012-09-25 08:24 | 2012-09-25 10:24 | 0.25d | 30.45d | 0d | Mithun Desai | 2h |
| 304 | 1.4.17.2 | Training | 0.25d | 2012-09-25 10:24 | 2012-09-25 12:24 | 303 | 2012-09-25 10:24 | 2012-09-25 12:24 | 0.25d | 30.45d | 0d | Mithun Desai | 2h |
| 305 | 1.4.18 | **FINAL ACCEPTANCE** | 0.5d | 2012-09-25 12:24 | 2012-09-26 08:24 |  | 2012-09-25 12:24 | 2012-09-26 08:24 | 0.5d | 30.45d |  |  | 4h |
| 306 | 1.4.18.1 | Official Presentation | 0.25d | 2012-09-25 12:24 | 2012-09-25 14:24 | 304 | 2012-09-25 12:24 | 2012-09-25 14:24 | 0.25d | 30.45d | 0d | Mithun Desai | 2h |
| 307 | 1.4.18.2 | Phase Closure | 0.25d | 2012-09-25 14:24 | 2012-09-26 08:24 | 306 | 2012-09-25 14:24 | 2012-09-26 08:24 | 0.25d | 30.45d |  | Mithun Desai | 2h |
| 308 | 1.5 | **Phase 3 - Support** | 30d | 2012-09-26 12:00 | 2012-11-07 12:00 |  | 2012-09-26 12:00 | 2012-11-07 12:00 | 30d | 0d |  |  | 240h |
| 309 | 1.5.1 | **SUPPORT** | 30d | 2012-09-26 12:00 | 2012-11-07 12:00 |  | 2012-09-26 12:00 | 2012-11-07 12:00 | 30d | 0d |  |  | 240h |
| 310 | 1.5.1.1 | Minor Enhancement | 5d | 2012-09-26 12:00 | 2012-10-03 12:00 | 207 | 2012-09-26 12:00 | 2012-10-03 12:00 | 5d | 0d |  | Dixit Sukhadiya | 40h |
| 311 | 1.5.1.2 | Support as required | 25d | 2012-10-03 12:00 | 2012-11-07 12:00 | 310 | 2012-10-03 12:00 | 2012-11-07 12:00 | 25d | 0d |  | Dixit Sukhadiya | 200h |
